# 舍里app1

Schedule from MS Project, 2019-03-01 to 2019-05-28, costs in ¥.
Microsoft

## Calendars

- 标准: Mon-Fri 08:00-12:00, 13:00-17:00; Sat-Sun off.

## Resources

| Resource | Rate |
| --- | --- |
| 项目经理 | 50 |
| 技术专家 | 35 |
| 质量专家 | 35 |
| 需求专家 | 35 |
| UI专家 | 35 |
| 材料 |  |
| 间接成本 |  |
| 前端程序员1 | 25 |
| 前端程序员2 | 25 |
| 后端程序员1 | 25 |
| 后端程序员2 | 25 |
| 测试员1 | 25 |
| 测试员2 | 25 |
| 团建费用 |  |

## Schedule

| ID | WBS | Task | Type | Duration | Start | Finish | Predecessors | Total slack | Resources | Work | Cost |
| --- | --- | --- | --- | --- | --- | --- | --- | --- | --- | --- | --- |
| 1 | 1 | **启动** |  | 4d | 2019-03-01 | 2019-03-07 |  |  | 间接成本 [0.1%]; 项目经理 | 124h | 5,300 |
| 2 | 1.1 | 组建核心团队 | manual | 0.5d | 2019-03-01 | 2019-03-01 |  |  | 项目经理; UI专家; 技术专家; 需求专家; 质量专家 | 20h | 760 |
| 3 | 1.2 | 干系人分析 | manual | 0.5d | 2019-03-01 | 2019-03-01 |  |  | 需求专家; 项目经理 | 8h | 340 |
| 4 | 1.3 | 里程碑计划 | manual | 1d | 2019-03-04 | 2019-03-05 |  |  | 项目经理; 需求专家 | 16h | 680 |
| 5 | 1.4 | 制定项目章程 | manual | 1d | 2019-03-05 | 2019-03-06 | 2, 3, 4 |  | 项目经理 | 8h | 400 |
| 6 | 1.5 | 项目启动大会 | manual | 1d | 2019-03-06 | 2019-03-07 | 5 |  | UI专家; 技术专家; 项目经理; 需求专家; 质量专家 | 40h | 1,520 |
| 7 | 2 | **规划** |  | 21d | 2019-03-07 | 2019-04-05 |  |  | 间接成本 [0.1%]; 项目经理 | 440h | 20,920 |
| 8 | 2.1 | **规划范围** |  | 6d | 2019-03-07 | 2019-03-15 |  |  |  | 48h | 2,040 |
| 9 | 2.1.1 | 制定需求说明书 | manual | 1d | 2019-03-07 | 2019-03-08 | 6 |  | 需求专家 | 8h | 280 |
| 10 | 2.1.2 | 界面设计 | manual | 1d | 2019-03-08 | 2019-03-11 | 9 |  | UI专家 | 8h | 280 |
| 11 | 2.1.3 | 详细设计说明书 | manual | 1d | 2019-03-11 | 2019-03-12 | 9 |  | 技术专家 | 8h | 280 |
| 12 | 2.1.4 | 范围说明书 | manual | 1d | 2019-03-12 | 2019-03-13 | 9 |  | 项目经理 | 8h | 400 |
| 13 | 2.1.5 | 创建WBS | manual | 1d | 2019-03-13 | 2019-03-14 | 10, 11, 12 |  | 项目经理 | 8h | 400 |
| 14 | 2.1.6 | 形成范围基准 |  | 1d | 2019-03-14 | 2019-03-15 | 13 | 0d | 项目经理 | 8h | 400 |
| 15 | 2.2 | **规划时间** |  | 5d | 2019-03-15 | 2019-03-22 |  |  |  | 40h | 2,000 |
| 16 | 2.2.1 | 排序工作包顺序 | manual | 1d | 2019-03-15 | 2019-03-18 | 14 |  | 项目经理 | 8h | 400 |
| 17 | 2.2.2 | 估算资源 | manual | 1d | 2019-03-18 | 2019-03-19 | 16 |  | 项目经理 | 8h | 400 |
| 18 | 2.2.3 | 估算持续时间 | manual | 1d | 2019-03-19 | 2019-03-20 | 17 |  | 项目经理 | 8h | 400 |
| 19 | 2.2.4 | 制定进度计划 | manual | 1d | 2019-03-20 | 2019-03-21 | 18 |  | 项目经理 | 8h | 400 |
| 20 | 2.2.5 | 形成进度基准 | manual | 1d | 2019-03-21 | 2019-03-22 | 19 |  | 项目经理 | 8h | 400 |
| 21 | 2.3 | **规划成本** |  | 2d | 2019-03-22 | 2019-03-26 |  |  | 项目经理 | 32h | 1,600 |
| 22 | 2.3.1 | 项目成本估算 | manual | 1d | 2019-03-22 | 2019-03-25 |  |  | 项目经理 | 8h | 400 |
| 23 | 2.3.2 | 项目成本预算 | manual | 1d | 2019-03-25 | 2019-03-26 |  |  | 项目经理 | 8h | 400 |
| 24 | 2.4 | **规划质量** |  | 1d | 2019-03-26 | 2019-03-27 |  |  | 质量专家 | 16h | 560 |
| 25 | 2.4.1 | 制定测试计划 | manual | 0.5d | 2019-03-26 | 2019-03-26 |  |  | 质量专家 | 4h | 140 |
| 26 | 2.4.2 | 制定测试用例 | manual | 0.5d | 2019-03-26 | 2019-03-26 |  |  | 质量专家 | 4h | 140 |

| ID | WBS | Task | Type | Duration | Start | Finish | Total slack | Constraint | Resources | Work | Cost |
| --- | --- | --- | --- | --- | --- | --- | --- | --- | --- | --- | --- |
| 27 | 2.5 | **规划人力资源** |  | 1d | 2019-03-27 | 2019-03-28 |  |  | 项目经理 | 16h | 800 |
| 28 | 2.5.1 | 制定人力资源计划 | manual | 0.5d | 2019-03-27 | 2019-03-27 |  |  | 项目经理 | 4h | 200 |
| 29 | 2.5.2 | 制定人员配备管理计划 | manual | 0.5d | 2019-03-27 | 2019-03-27 |  |  | 项目经理 | 4h | 200 |
| 30 | 2.6 | **规划沟通** |  | 1d | 2019-03-28 | 2019-03-29 |  |  | 项目经理 | 16h | 800 |
| 31 | 2.6.1 | 制定沟通管理计划 | manual | 1d | 2019-03-28 | 2019-03-29 |  |  | 项目经理 | 8h | 400 |
| 32 | 2.7 | **规划采购** |  | 1d | 2019-03-29 | 2019-04-01 |  |  | 项目经理 | 16h | 800 |
| 33 | 2.7.1 | 自制/外购分析 | manual | 0.5d | 2019-03-29 | 2019-03-29 |  |  | 项目经理 | 4h | 200 |
| 34 | 2.7.2 | 制定采购文件 | manual | 0.5d | 2019-03-29 | 2019-03-29 |  |  | 项目经理 | 4h | 200 |
| 35 | 2.8 | **规划风险** |  | 3d | 2019-04-01 | 2019-04-04 |  |  | 项目经理 | 48h | 2,400 |
| 36 | 2.8.1 | 识别风险 | manual | 1d | 2019-04-01 | 2019-04-02 |  |  | 项目经理 | 8h | 400 |
| 37 | 2.8.2 | 风险分析 | manual | 1d | 2019-04-02 | 2019-04-03 |  |  | 项目经理 | 8h | 400 |
| 38 | 2.8.3 | 制定风险登记册 | manual | 1d | 2019-04-03 | 2019-04-04 |  |  | 项目经理 | 8h | 400 |
| 39 | 2.9 | 规划整合 |  | 1d | 2019-04-04 | 2019-04-05 | 37d | start no earlier than 2019-04-04 | 项目经理; UI专家; 技术专家; 需求专家; 质量专家 | 40h | 1,520 |
| 40 | 3 | **执行与监控** |  | 33d | 2019-04-05 | 2019-05-21 |  |  |  | 1500h | 50,540 |
| 41 | 3.1 | 组建项目团队 | manual | 2d | 2019-04-05 | 2019-04-09 |  |  | UI专家; 技术专家; 项目经理; 需求专家; 质量专家 | 80h | 3,040 |
| 42 | 3.2 | **项目执行** |  | 24d | 2019-04-09 | 2019-05-10 |  |  |  | 596h | 14,940 |
| 43 | 3.2.1 | **用户模块** |  | 3d | 2019-04-09 | 2019-04-12 |  |  |  | 100h | 2,540 |
| 44 | 3.2.1.1 | **用户注册** |  | 2d | 2019-04-09 | 2019-04-11 |  |  | 测试员1; 后端程序员1; 前端程序员1 | 64h | 1,600 |
| 45 | 3.2.1.1.1 | 构建用户信息的数据表 | manual | 0.5d | 2019-04-09 | 2019-04-09 |  |  | 后端程序员1 | 4h | 100 |
| 46 | 3.2.1.1.2 | 注册页面的UI设计 | manual | 0.5d | 2019-04-09 | 2019-04-09 |  |  | 前端程序员1 | 4h | 100 |
| 47 | 3.2.1.1.3 | 注册页面注册功能实现 | manual | 0.5d | 2019-04-10 | 2019-04-10 |  |  | 后端程序员1 | 4h | 100 |
| 48 | 3.2.1.1.4 | 注册功能的测试 | manual | 0.5d | 2019-04-10 | 2019-04-10 |  |  | 测试员1 | 4h | 100 |
| 49 | 3.2.1.2 | **用户登录** |  | 1d | 2019-04-11 | 2019-04-12 |  |  | 测试员1; 后端程序员1; 前端程序员1 | 36h | 940 |
| 50 | 3.2.1.2.1 | 登录页面的UI设计 | manual | 0.5d | 2019-04-03 | 2019-04-03 |  |  | UI专家; 前端程序员2 | 8h | 240 |
| 51 | 3.2.1.2.2 | 登录页面登录功能实现 | manual | 0.3d | 2019-04-03 | 2019-04-03 |  |  | 后端程序员2 | 2.4h | 60 |
| 52 | 3.2.1.2.3 | 登录功能的测试 | manual | 0.2d | 2019-04-03 | 2019-04-03 |  |  | 测试员2 | 1.6h | 40 |

| ID | WBS | Task | Type | Duration | Start | Finish | Resources | Work | Cost |
| --- | --- | --- | --- | --- | --- | --- | --- | --- | --- |
| 53 | 3.2.2 | **求助模块** |  | 6d | 2019-04-12 | 2019-04-22 |  | 120h | 3,000 |
| 54 | 3.2.2.1 | 设计求助信息的数据表 | manual | 1d | 2019-04-12 | 2019-04-15 | 后端程序员2 | 8h | 200 |
| 55 | 3.2.2.2 | 页面设计 | manual | 2d | 2019-04-15 | 2019-04-17 | 前端程序员2 | 16h | 400 |
| 56 | 3.2.2.3 | 发布求助功能 | manual | 3d | 2019-04-17 | 2019-04-22 | 后端程序员2 | 24h | 600 |
| 57 | 3.2.2.4 | 再编辑求助 | manual | 3d | 2019-04-17 | 2019-04-22 | 后端程序员2 | 24h | 600 |
| 58 | 3.2.2.5 | 解答求助 | manual | 3d | 2019-04-17 | 2019-04-22 | 后端程序员2 | 24h | 600 |
| 59 | 3.2.2.6 | 测试发布、解答功能 | manual | 3d | 2019-04-17 | 2019-04-22 | 测试员2 | 24h | 600 |
| 60 | 3.2.3 | **文章模块** |  | 8d | 2019-04-12 | 2019-04-24 |  | 208h | 5,200 |
| 61 | 3.2.3.1 | 设计文章信息的数据表 | manual | 2d | 2019-04-12 | 2019-04-16 | 后端程序员1 | 16h | 400 |
| 62 | 3.2.3.2 | 页面设计 | manual | 3d | 2019-04-16 | 2019-04-19 | 前端程序员1 | 24h | 600 |
| 63 | 3.2.3.3 | 发表文章 | manual | 3d | 2019-04-19 | 2019-04-24 | 后端程序员1 | 24h | 600 |
| 64 | 3.2.3.4 | 再编辑文章 | manual | 3d | 2019-04-19 | 2019-04-24 | 后端程序员1 | 24h | 600 |
| 65 | 3.2.3.5 | 评论文章 | manual | 3d | 2019-04-19 | 2019-04-24 | 后端程序员1 | 24h | 600 |
| 66 | 3.2.3.6 | 点赞文章 | manual | 3d | 2019-04-19 | 2019-04-24 | 后端程序员1 | 24h | 600 |
| 67 | 3.2.3.7 | 举报文章 | manual | 3d | 2019-04-19 | 2019-04-24 | 后端程序员1 | 24h | 600 |
| 68 | 3.2.3.8 | 收藏文章 | manual | 3d | 2019-04-19 | 2019-04-24 | 后端程序员1 | 24h | 600 |
| 69 | 3.2.3.9 | 测试发表、评论、点赞、收藏、举报功能 | manual | 3d | 2019-04-19 | 2019-04-24 | 测试员1 | 24h | 600 |
| 70 | 3.2.4 | **个人中心模块** |  | 9d | 2019-04-22 | 2019-05-03 |  | 72h | 1,800 |
| 71 | 3.2.4.1 | 设计个人详细信息数据表 | manual | 1d | 2019-04-22 | 2019-04-23 | 后端程序员2 | 8h | 200 |
| 72 | 3.2.4.2 | 页面设计 | manual | 1d | 2019-04-23 | 2019-04-24 | 前端程序员2 | 8h | 200 |
| 73 | 3.2.4.3 | 修改个人信息 | manual | 1d | 2019-04-24 | 2019-04-25 | 后端程序员2 | 8h | 200 |
| 74 | 3.2.4.4 | **我的发布** |  | 2d | 2019-04-25 | 2019-04-29 | 后端程序员2 | 16h | 400 |
| 75 | 3.2.4.4.1 | 发布的求助列表 | manual | 0.5d | 2019-04-25 | 2019-04-25 |  |  |  |
| 76 | 3.2.4.4.2 | 发布的文章列表 | manual | 0.5d | 2019-04-25 | 2019-04-25 |  |  |  |
| 77 | 3.2.4.4.3 | 删除文章、求助 | manual | 0.5d | 2019-04-26 | 2019-04-26 |  |  |  |
| 78 | 3.2.4.4.4 | 文章、求助设置权限 | manual | 0.5d | 2019-04-26 | 2019-04-26 |  |  |  |
| 79 | 3.2.4.5 | 我的收藏 | manual | 0.5d | 2019-04-29 | 2019-04-29 | 后端程序员2 | 4h | 100 |
| 80 | 3.2.4.6 | 我的好友 | manual | 0.5d | 2019-04-29 | 2019-04-29 | 后端程序员2 | 4h | 100 |

| ID | WBS | Task | Type | Duration | Start | Finish | Resources | Work | Cost |
| --- | --- | --- | --- | --- | --- | --- | --- | --- | --- |
| 81 | 3.2.4.7 | **选择服务** |  | 2d | 2019-04-29 | 2019-05-01 | 后端程序员2 | 16h | 400 |
| 82 | 3.2.4.7.1 | 寄存物品 | manual | 1d | 2019-04-29 | 2019-04-30 |  |  |  |
| 83 | 3.2.4.7.2 | 捐赠物品 | manual | 1d | 2019-04-30 | 2019-05-01 |  |  |  |
| 84 | 3.2.4.8 | 软件设置 | manual | 1d | 2019-05-01 | 2019-05-02 | 后端程序员2 | 8h | 200 |
| 85 | 3.2.5 | **咨询师模块** |  | 9d | 2019-04-24 | 2019-05-07 |  | 72h | 1,800 |
| 86 | 3.2.5.1 | 设计咨询师信息的数据表 | manual | 1d | 2019-04-24 | 2019-04-25 | 后端程序员1 | 8h | 200 |
| 87 | 3.2.5.2 | 应聘职位功能 | manual | 2d | 2019-04-25 | 2019-04-29 | 后端程序员1 | 16h | 400 |
| 88 | 3.2.5.3 | 咨询师信息列表 | manual | 2d | 2019-04-29 | 2019-05-01 | 后端程序员1 | 16h | 400 |
| 89 | 3.2.5.4 | 预约咨询师 | manual | 2d | 2019-05-01 | 2019-05-03 | 后端程序员1 | 16h | 400 |
| 90 | 3.2.5.5 | 与咨询师聊天 | manual | 2d | 2019-05-03 | 2019-05-07 | 后端程序员1 | 16h | 400 |
| 91 | 3.2.6 | **管理员模块** |  | 3d | 2019-05-07 | 2019-05-10 |  | 24h | 600 |
| 92 | 3.2.6.1 | 审核信息 | manual | 1d | 2019-05-07 | 2019-05-08 | 后端程序员1 | 8h | 200 |
| 93 | 3.2.6.2 | 活动发布 | manual | 1d | 2019-05-08 | 2019-05-09 | 后端程序员2 | 8h | 200 |
| 94 | 3.2.6.3 | 分析用户登录 | manual | 1d | 2019-05-09 | 2019-05-10 | 后端程序员1 | 8h | 200 |
| 95 | 3.3 | **项目监控** |  | 24d | 2019-04-09 | 2019-05-10 | UI专家; 技术专家; 项目经理; 质量专家 | 768h | 29,760 |
| 96 | 3.3.1 | 各项指标监控 | manual | 24d | 2019-04-09 | 2019-05-10 |  |  |  |
| 97 | 3.3.2 | 监控评审 | manual | 24d | 2019-04-09 | 2019-05-10 |  |  |  |
| 98 | 3.3.3 | 变更评审 | manual | 24d | 2019-04-09 | 2019-05-10 |  |  |  |
| 99 | 3.3.4 | 例会 | manual | 24d | 2019-04-09 | 2019-05-10 |  |  |  |
| 100 | 3.4 | **管理干系人** |  | 7d | 2019-04-09 | 2019-04-18 | 项目经理 | 56h | 2,800 |
| 101 | 3.4.1 | 发布项目信息 | manual | 2d | 2019-04-09 | 2019-04-11 |  |  |  |
| 102 | 3.4.2 | 报告监控指标 | manual | 2d | 2019-04-11 | 2019-04-15 |  |  |  |
| 103 | 3.4.3 | 干系人沟通 | manual | 3d | 2019-04-15 | 2019-04-18 |  |  |  |
| 104 | 3.5 | **团队建设** |  | 10d | 2019-04-09 | 2019-04-23 | 团建费用 [0.1%] |  |  |
| 105 | 3.5.1 | 培训 | manual | 1d | 2019-04-09 | 2019-04-10 |  |  |  |
| 106 | 3.5.2 | 娱乐活动 | manual | 6d | 2019-04-10 | 2019-04-18 |  |  |  |
| 107 | 3.5.3 | 沟通 | manual | 3d | 2019-04-18 | 2019-04-23 |  |  |  |
| 108 | 3.6 | 采购 | manual | 3d | 2019-04-10 | 2019-04-15 |  |  |  |
| 109 | 3.7 | 项目验收 | manual | 2d | 2019-05-17 | 2019-05-21 |  |  |  |

| ID | WBS | Task | Type | Duration | Start | Finish | Resources | Work | Cost |
| --- | --- | --- | --- | --- | --- | --- | --- | --- | --- |
| 110 | 4 | **收尾** |  | 12d | 2019-05-10 | 2019-05-28 |  | 536h | 17,800 |
| 111 | 4.1 | 项目终验 | manual | 3d | 2019-05-10 | 2019-05-15 | 测试员1; 测试员2; 技术专家; 需求专家; 质量专家; 项目经理 | 144h | 4,920 |
| 112 | 4.2 | 结束采购 | manual | 5d | 2019-05-15 | 2019-05-22 | 项目经理 | 40h | 2,000 |
| 113 | 4.3 | 项目内部收尾 | manual | 4d | 2019-05-22 | 2019-05-28 | UI专家; 测试员1; 测试员2; 后端程序员1; 后端程序员2; 技术专家; 前端程序员1; 前端程序员2; 项目经理; 需求专家; 质量专家 | 352h | 10,880 |
